# STO

Schedule from a web Gantt chart, 2024-07-24 to 2024-08-30.
Saturdays and Sundays are off

## Schedule

| ID | WBS | Task | Type | Duration | Start | Finish | Predecessors | Complete | Status |
| --- | --- | --- | --- | --- | --- | --- | --- | --- | --- |
| 2 | 1 | **AUTO EARN OPTIMIZATION PLAN** |  | 28d | 2024-07-24 | 2024-08-30 |  | 2% |  |
| 3 | 1.1 | **Auto earn optimizations** |  | 14d | 2024-07-24 | 2024-08-12 |  | 8% |  |
| 4 | 1.1.1 | FP invoice API update (WCHAT-14420) |  | 1d | 2024-07-24 | 2024-07-24 |  | 100% | done |
| 5 | 1.1.2 | Points Posting Failure Handling (WCHAT-15359) |  | 6d | 2024-07-24 | 2024-07-31 |  |  |  |
| 6 | 1.1.3 | SIT for 14420&15359 |  | 2d | 2024-08-01 | 2024-08-02 | 5 |  | waiting |
| 7 | 1.1.4 | UAT for 14420&15359 |  | 2d | 2024-08-05 | 2024-08-06 | 6 |  | waiting |
| 8 | 1.1.5 | Release for 14420&15359 |  | 1d | 2024-08-12 | 2024-08-12 |  |  | waiting |
| 9 | 1.2 | **FP certification** |  | 23d | 2024-07-24 | 2024-08-23 |  |  |  |
| 10 | 1.2.1 | Execute FP test case |  | 2d | 2024-08-08 | 2024-08-09 |  |  | waiting |
| 11 | 1.2.2 | Submit FP test case | fixed end | 1d | 2024-08-12 | 2024-08-12 |  |  | waiting |
| 12 | 1.2.3 | Review test case & back and forth | fixed end | 9d | 2024-08-13 | 2024-08-23 |  |  | waiting |
| 13 | 1.2.4 | Prepare documents |  | 8d | 2024-07-24 | 2024-08-02 |  |  |  |
| 14 | 1.2.5 | Submit and review documents | fixed end | 10d | 2024-08-05 | 2024-08-16 |  |  | waiting |
| 15 | 1.3 | **E2E** |  | 3d | 2024-08-28 | 2024-08-30 |  |  | waiting |
| 16 | 1.3.1 | Verification on Simphony hotel |  | 3d | 2024-08-28 | 2024-08-30 |  |  | waiting |
| 17 | 1.3.2 | Verification on Infrasys hotel |  | 1d | 2024-08-28 | 2024-08-28 |  |  | waiting |
